# MEx_Plan

Schedule from MS Project, 2017-05-08 to 2017-08-25, A marks actual dates.

## Calendars

- Standard: Mon-Fri 08:00-12:00, 13:00-17:00; Sat-Sun off.

## Resources

| Resource |
| --- |
| MEx Team |
| MEx Team and Supervisor |
| HoangPM |
| TuDN |
| AnhLB |
| PhongDC |
| LuatPD |
| HuongLX |
| PhonngDC |
| V |
| Supervisor |

## Schedule

| ID | WBS | Task | Type | Duration | Start | Finish | Complete | Remaining | Total slack | Resources | Work | Actual work |
| --- | --- | --- | --- | --- | --- | --- | --- | --- | --- | --- | --- | --- |
| 1 | 1 | **Capstone Project Plan** |  | 80d | 2017-05-08 A | 2017-08-25 | 23% | 61.32d | 0d |  | 4648h | 968h |
| 2 | 1.1 | **Phase 1: Create Function required** |  | 45d | 2017-05-08 A | 2017-07-07 | 44% | 25.16d | 0d |  | 2392h | 968h |
| 3 | 1.1.1 | **1. Initiating** |  | 3d | 2017-05-08 A | 2017-05-10 A | 100% |  |  |  | 32h | 32h |
| 4 | 1.1.1.1 | 1.1. Generate Project Ideas | manual | 2d | 2017-05-08 A | 2017-05-09 A | 100% |  |  | MEx Team | 16h | 16h |
| 5 | 1.1.1.2 | 1.2. Ideas Review | manual | 1d | 2017-05-09 A | 2017-05-09 A | 100% |  |  | MEx Team | 8h | 8h |
| 6 | 1.1.1.3 | 1.3. Meeting for closing final topic and set group working rules | manual | 1d | 2017-05-10 A | 2017-05-10 A | 100% |  |  | MEx Team and Supervisor | 8h | 8h |
| 7 | 1.1.2 | **2. Planing and preparing** |  | 11d | 2017-05-12 A | 2017-05-26 A | 100% |  |  |  | 168h | 168h |
| 8 | 1.1.2.1 | 2.1. Requirement analysis and Planning | manual | 2d | 2017-05-12 A | 2017-05-15 A | 100% |  |  | MEx Team | 16h | 16h |
| 9 | 1.1.2.2 | 2.2. Tools and devices analysis and choosing | manual | 1d | 2017-05-15 A | 2017-05-15 A | 100% |  |  | MEx Team | 8h | 8h |
| 10 | 1.1.2.3 | 2.3. Download and intall softwares | manual | 2d | 2017-05-16 A | 2017-05-17 A | 100% |  |  | MEx Team | 16h | 16h |
| 11 | 1.1.2.4 | 2.4. Order Pi-kit and Wifi sheild from over sea | manual | 8d | 2017-05-17 A | 2017-05-26 A | 100% |  |  | HoangPM; TuDN | 128h | 128h |
| 12 | 1.1.3 | **3. Technical understanding** |  | 11d | 2017-05-16 A | 2017-05-30 A | 100% |  |  |  | 640h | 640h |
| 13 | 1.1.3.1 | 3.1. Studying Android and Java development | manual | 11d | 2017-05-16 A | 2017-05-30 A | 100% |  |  | MEx Team | 88h | 88h |
| 14 | 1.1.3.2 | 3.2. Study about MEx technology | manual | 6d | 2017-05-16 A | 2017-05-23 A | 100% |  |  | AnhLB | 48h | 48h |
| 15 | 1.1.3.3 | 3.3. Study Wifi communication and module Wifi Sheild | manual | 9d | 2017-05-16 A | 2017-05-26 A | 100% |  |  | HoangPM; PhongDC | 144h | 144h |
| 16 | 1.1.3.4 | 3.4. Study about Arduino, Pi | manual | 9d | 2017-05-16 A | 2017-05-26 A | 100% |  |  | LuatPD; HuongLX | 144h | 144h |
| 17 | 1.1.3.5 | 3.5. Study about Circuit of hardware | manual | 9d | 2017-05-16 A | 2017-05-26 A | 100% |  |  | TuDN; HuongLX; LuatPD | 216h | 216h |
| 18 | 1.1.4 | **4. Design** |  | 6d | 2017-05-29 A | 2017-06-05 | 67% | 2d | 0d |  | 200h | 128h |
| 19 | 1.1.4.1 | 4.1. Design Car model for MEx System | manual | 6d | 2017-05-29 A | 2017-06-05 | 67% | 2d |  | HuongLX | 48h | 32h |
| 20 | 1.1.4.2 | 4.2. Design Controller for Mex system | manual | 3d | 2017-06-01 A | 2017-06-05 | 67% | 1d |  | AnhLB | 32h | 24h |
| 21 | 1.1.4.3 | 4.3 Embedded and Android Software Archtecture design | manual | 3d | 2017-06-01 A | 2017-06-05 A | 100% |  |  | PhongDC; HoangPM | 48h | 48h |
| 22 | 1.1.4.4 | 4.4. Embedded and Android Software Detailed design | manual | 3d | 2017-06-01 A | 2017-06-05 | 33% | 2d |  | TuDN; HuongLX; LuatPD | 72h | 24h |
| 23 | 1.1.5 | **5. Implementation** |  | 19d | 2017-06-01 | 2017-06-27 |  |  | 0d |  | 1056h |  |
| 24 | 1.1.5.1 | 5.1. Assemble Components | manual | 6d | 2017-06-05 | 2017-06-12 |  |  |  | TuDN; AnhLB | 96h |  |
| 25 | 1.1.5.2 | 5.2. Code for wifi communication | manual | 6d | 2017-06-12 | 2017-06-19 |  |  |  | PhongDC; HoangPM | 96h |  |
| 26 | 1.1.5.3 | 5.3. Code for Car model embedded software module | manual | 18d | 2017-06-01 | 2017-06-26 |  |  |  | HuongLX; TuDN | 288h |  |
| 27 | 1.1.5.4 | 5.4. Code for Controller embedded softwate module | manual | 19d | 2017-06-01 | 2017-06-27 |  |  |  | AnhLB; HoangPM | 304h |  |
| 28 | 1.1.5.5 | 5.5.Code for Android application | manual | 17d | 2017-06-01 | 2017-06-23 |  |  |  | LuatPD; PhongDC | 272h |  |

| ID | WBS | Task | Type | Duration | Start | Finish | Total slack | Constraint | Resources | Work |
| --- | --- | --- | --- | --- | --- | --- | --- | --- | --- | --- |
| 29 | 1.1.6 | **6. Testing** |  | 18d | 2017-06-14 | 2017-07-07 | 0d |  |  | 296h |
| 30 | 1.1.6.1 | 6.1. Design test cases | manual | 4d | 2017-06-14 | 2017-06-19 |  |  | TuDN; AnhLB; LuatPD | 96h |
| 31 | 1.1.6.2 | 6.2. Hardware unit test | manual | 3d | 2017-06-20 | 2017-06-22 |  |  | HuongLX; HoangPM | 48h |
| 32 | 1.1.6.3 | 6.3. Hardware system test | manual | 2d | 2017-06-23 | 2017-06-25 |  |  | HuongLX; HoangPM | 32h |
| 33 | 1.1.6.4 | 6.4. Software unit test | manual | 3d | 2017-06-27 | 2017-06-29 |  |  | PhongDC; AnhLB | 48h |
| 34 | 1.1.6.5 | 6.5. Software system test | manual | 2d | 2017-06-30 | 2017-07-01 |  |  | PhongDC; LuatPD | 32h |
| 35 | 1.1.6.6 | 6.6. System test | manual | 5d | 2017-07-03 | 2017-07-07 |  |  | MEx Team | 40h |
| 36 | 1.2 | **Phase 2: Additional Function** |  | 30d | 2017-07-10 | 2017-08-18 | 3d |  |  | 936h |
| 37 | 1.2.1 | 1. Planning |  | 4d | 2017-07-10 | 2017-07-13 | 31d | finish no earlier than 2017-07-13 | MEx Team | 32h |
| 38 | 1.2.2 | **2. Design** |  | 6d | 2017-07-13 | 2017-07-20 | 0d |  |  | 80h |
| 39 | 1.2.2.1 | 2.1. Design for Hardware | manual | 6d | 2017-07-13 | 2017-07-20 |  |  | MEx Team | 48h |
| 40 | 1.2.2.2 | 2.2. Design for embedded software | manual | 4d | 2017-07-17 | 2017-07-20 |  |  | MEx Team | 32h |
| 41 | 1.2.3 | **3. Implementation** |  | 13d | 2017-07-19 | 2017-08-04 | 0d |  |  | 624h |
| 42 | 1.2.3.1 | 3.1. Assemble components | manual | 13d | 2017-07-19 | 2017-08-04 |  |  | AnhLB; HuongLX; PhongDC | 312h |
| 43 | 1.2.3.2 | 3.2. Update Embedded software | manual | 13d | 2017-07-19 | 2017-08-04 |  |  | HoangPM; LuatPD; TuDN | 312h |
| 44 | 1.2.4 | **4. Testing** |  | 10d | 2017-08-07 | 2017-08-18 | 0d |  |  | 200h |
| 45 | 1.2.4.1 | 4.1. Design Test cases | manual | 3d | 2017-08-07 | 2017-08-09 |  |  | HoangPM; LuatPD; TuDN | 72h |
| 46 | 1.2.4.2 | 4.2. Hardware unit test | manual | 3d | 2017-08-07 | 2017-08-09 |  |  | AnhLB; HuongLX; PhongDC | 72h |
| 47 | 1.2.4.3 | 4.3. System test | manual | 7d | 2017-08-10 | 2017-08-18 |  |  | MEx Team | 56h |
| 48 | 1.3 | **Prepare for the Thesis Defend** |  | 5d | 2017-08-20 | 2017-08-25 | 0d |  |  | 64h |
| 49 | 1.3.1 | 1. Project review | manual | 2d | 2017-08-20 | 2017-08-21 |  |  | MEx Team; Supervisor | 32h |
| 50 | 1.3.2 | 2. Print documents | manual | 1d | 2017-08-21 | 2017-08-21 |  |  | TuDN | 8h |
| 51 | 1.3.3 | 3. Prepare for the final presentation | manual | 3d | 2017-08-23 | 2017-08-25 |  |  | MEx Team | 24h |
| 52 | 1.4 | **Document** |  | 72d | 2017-05-11 | 2017-08-19 | 0d |  |  | 1256h |
| 53 | 1.4.1 | 1. Report 1: Introduction | manual | 6d | 2017-05-11 | 2017-05-18 |  |  | TuDN; AnhLB | 96h |
| 54 | 1.4.2 | 2. Report 2: Project management plan | manual | 6d | 2017-05-22 | 2017-05-29 |  |  | TuDN; HoangPM | 96h |
| 55 | 1.4.3 | 3. Report 3: System requirements specifications | manual | 16d | 2017-05-29 | 2017-06-19 |  |  | TuDN; AnhLB | 256h |
| 56 | 1.4.4 | 4. Report 4: System design description | manual | 10d | 2017-06-26 | 2017-07-07 |  |  | TuDN; AnhLB | 160h |
| 57 | 1.4.5 | 5. Report 5: System implementation & test | manual | 21d | 2017-07-10 | 2017-08-07 |  |  | TuDN; AnhLB | 336h |
| 58 | 1.4.6 | 6. Report 6: System User's Manual | manual | 11d | 2017-08-07 | 2017-08-19 |  |  | TuDN | 88h |
| 59 | 1.4.7 | 7. Slide | manual | 7d | 2017-08-11 | 2017-08-19 |  |  | AnhLB; TuDN | 112h |
| 60 | 1.4.8 | 8. Final report | manual | 7d | 2017-08-11 | 2017-08-19 |  |  | TuDN; AnhLB | 112h |
